# John Wiley & Sons Inc.

Schedule from MS Project, 2024-02-01 to 2024-07-30, status date 2024-05-11, costs in $, A marks actual dates.
Our Client - John Wiley & Sons Inc.
The objective of this project is to build an advanced website, 'State of the Art,' for our client, John Wiley & Sons, Inc. The project has been authorized, and funding has been approved. We will establish a scope baseline, cost baseline, and schedule baseline, and demonstrate the need for deliverables (sub-types) and activities involved. / Observation: After assigning resources, no significant changes were observed in the project statistics. Duration, work hours, and costs remained consistent. While the assignment of resources did not lead to immediate changes, it's crucial to monitor project progress closely to detect any potential impacts on activity durations or resource utilization. / Cost of project - The planned cost for the enitre task is $279572.00. However, the actual cost for completed task is different as it turned out to be $56216 , which includes an additional $223356.00.

## Calendars

- Standard: Mon-Fri 08:00-12:00, 13:00-17:00; Sat-Sun off. Exceptions (off unless hours are given): 2024-03-18 (Event), 2024-04-29 to 2024-04-30 08:00-12:00, 13:00-17:00 (Public Holiday (Assumed)).

## Resources

| Resource | Group | Rate | Notes |
| --- | --- | --- | --- |
| Project Manager (Dia Khosla ) | Management | 55 | Dia Khosla, the project manager, will be exclusively dedicated to the project for client John Wiley & Sons, from project initiation to project closing. Therefore, the Max-Units value has been set to 200% to signify her full commitment to this project. This allocation ensures that Dia Khosla can devote her undivided attention and resources to the successful execution of the project for John Wiley & Sons. / The project manager's workload appears to be significantly underallocated. Specifically, the estimated effort required to complete the project for John Wiley and Sons is 488 hours, while only 232 hours have been allocated for the project manager's tasks. |
| Reseach Department | Research | 20 | Setting the Max Units to 200% for Research Department indicates that they will be two research workers available to dedicate their time to this project. Because reseseach and development can have unknowns so adding buffer. |
| Operational Analysts | Analysis for Website | 20 | Adjusted maximum units to 200% for operational analysts to reflect full time availability in project for John Wiley & Sons Inc. As, two resources working on this at a time to conduct relevant analysis for 'Project Management in Practice'. |
| Data Analysts | General Analysis | 10 | Adjusted the maximum units to 80% for data analysts to reflect their availability due to other commitments. Additionally, we don't require their full-time availability. |
| Web Developer (Noah Japhet and his Team) | Development | 35 | The entire team consisting of four web developers managed by Noah Japhet will be fully dedicated to the project for creating the advanced website for client John Wiley & Sons, named 'State of The Art'. This commitment will ensure that all members of the web development team will allocate 100% of their Max-Units each to this project, ensuring collective focus and expertise in delivering a high-quality website tailored to the client's needs. |
| Design Team | Design | 30 | We will require 500% of their availability ( / 5 team members from design department) to design the 'State of the Art Website' and will work on the most of the content, design templates, prototypes, and mockups for our client, John Wiley and Sons. |
| SEO Team | Marketing | 40 |  |
| Content Team( Mary Ellen’ team (Assumed) ) | Content | 30 |  |
| Testing Team | Quality Assurance | 45 |  |
| UI/UX Designer and Testing Team (John Smith (Assumed) ) | Design / Quality Assurance | 35 |  |
| System Administrator/DevOps Engineer (Noah Japhet and his team ) | IT | 55 | Noah Japhet and his 4 team members, as System Administrator/DevOps Engineers, are responsible for managing crucial aspects of the website infrastructure. They oversee web hosting, server configuration, and deployment processes, ensuring optimal performance and reliability. Their duties include prioritizing server security, implementing scalable solutions, and promptly addressing technical issues. Through regular monitoring and proactive maintenance, they ensure the seamless operation of the website, providing users with a smooth and reliable experience. |
| Front End Team | Development | 30 |  |
| Back End Team | Development | 25 | Work Allocation - The plan for tasks related to the Back End Team, such as developing software and setting up databases, doesn't have any time set aside for actual work, even though there's a lot of work estimated to be done. |
| Client/ Stakeholder Representative | Stakeholders | 20 | Allocation - The task assigned to the Client/Stakeholder Representative involves spending about 245 hours dealing with clients and stakeholders. However, only around 156 hours are set aside for actual work. |
| Consultant | External | 55 |  |
| Project Coordinator | Management | 30 | Allocation - The Project Coordinator's workload also demonstrates a significant underallocation. Despite the estimated effort for the Project Coordinator's tasks totaling 384 hours, only 128 hours have been allocated for actual work. Additionally, the positive variance between the estimated work and actual work hours presents an opportunity for the project coordinator to utilize more time in various work activities, thus enhancing their contribution to the success of the project. |
| Data Analysts | Analysis | 25 |  |
| Market Analysts | Marketing Department | 25 |  |
| Content Strategist (Mary Ellen) | Content | 15 |  |
| Graphic Design Team | Design | 25 |  |
| UX Designer (John Smith) | Design | 35 |  |
| Budget | Finance Team |  |  |
| Investment made in IT Software | Finance Team |  |  |
| Contingency Reserve |  |  |  |

## Schedule

| ID | WBS | Task | Type | Duration | Start | Finish | Predecessors | Complete | Remaining | Actual finish | Baseline start | Baseline finish | Baseline duration | Total slack | Constraint | Resources | Work | Actual work | Cost | Baseline cost | Actual cost |
| --- | --- | --- | --- | --- | --- | --- | --- | --- | --- | --- | --- | --- | --- | --- | --- | --- | --- | --- | --- | --- | --- |
| 1 | 1 | **Project Initiation** |  | 33d | 2024-02-01 A | 2024-03-19 |  | 100% |  | 2024-03-01 | 2024-02-01 | 2024-03-01 | 22d |  |  |  | 718h | 718h | 51,846 | 51,846 | 51,846 |
| 2 | 1.1 | **Requirement Gathering** |  | 12d | 2024-02-01 A | 2024-02-16 A |  | 100% |  |  | 2024-02-01 | 2024-02-16 | 12d |  |  |  | 610.8h | 610.8h | 47,796 | 47,796 | 47,796 |
| 3 | 1.1.1 | Anticipated Trade off | milestone | 0d | 2024-02-01 A | 2024-02-01 A |  | 100% |  |  | 2024-02-01 | 2024-02-01 | 0d |  | start no earlier than 2024-02-01 |  |  |  |  |  |  |
| 4 | 1.1.2 | Define Project Budget ( Track budget from project initiation to closing) |  | 2d | 2024-02-01 A | 2024-02-02 A | 3 | 100% |  |  | 2024-02-01 | 2024-02-02 | 2d |  |  | Project Manager (Dia Khosla ); Client/ Stakeholder Representative [85%]; Consultant [70%]; Project Coordinator | 56.8h | 56.8h | 2,248 | 2,248 | 2,248 |
| 5 | 1.1.3 | Define Project Schedule ( Track based during project life cycle) |  | 3d | 2024-02-02 A | 2024-02-07 A | 4 | 100% |  |  | 2024-02-02 | 2024-02-07 | 3d |  | finish no earlier than 2024-02-06 | Project Manager (Dia Khosla ); Consultant [70%]; Project Coordinator; Client/ Stakeholder Representative [85%] | 44.4h | 44.4h | 1,500 | 1,500 | 1,500 |
| 6 | 1.1.4 | **Create Project Charter** |  | 7d | 2024-02-08 A | 2024-02-16 A | 5 | 100% |  |  | 2024-02-08 | 2024-02-16 | 7d |  |  | Project Manager (Dia Khosla ); Client/ Stakeholder Representative [85%]; Consultant [70%]; Project Coordinator; Content Team( Mary Ellen’ team (Assumed) ) | 509.6h | 509.6h | 44,048 | 44,048 | 44,048 |
| 7 | 1.1.4.1 | Determine reserve & surplus needed |  | 4d | 2024-02-08 A | 2024-02-13 A | 4 | 100% |  |  | 2024-02-08 | 2024-02-13 | 4d |  |  | Project Manager (Dia Khosla ); Client/ Stakeholder Representative [85%]; Consultant [70%]; Project Coordinator; Content Team( Mary Ellen’ team (Assumed) ) | 145.6h | 145.6h | 4,500 | 4,500 | 4,500 |
| 8 | 1.1.4.2 | Determine Budget |  | 3d | 2024-02-14 A | 2024-02-16 A | 7 | 100% |  |  | 2024-02-14 | 2024-02-16 | 3d |  |  | Project Manager (Dia Khosla ); Client/ Stakeholder Representative [85%]; Consultant [70%]; Project Coordinator; Content Team( Mary Ellen’ team (Assumed) ) | 109.2h | 109.2h | 30,000 | 30,000 | 30,000 |
| 9 | 1.1.5 | Project Charter Completed | milestone | 0d | 2024-02-16 A | 2024-02-16 A | 6 | 100% |  |  | 2024-02-16 | 2024-02-16 | 0d |  |  |  |  |  |  |  |  |
| 10 | 1.2 | **Stakeholder Analysis** |  | 10d | 2024-02-19 A | 2024-03-01 A |  | 100% |  |  | 2024-02-19 | 2024-03-01 | 10d |  |  |  | 107.2h | 107.2h | 4,050 | 4,050 | 4,050 |
| 11 | 1.2.1 | Identify stakeholder's Interest and Influence (Power Grid) |  | 4d | 2024-02-19 A | 2024-02-22 A | 9 | 100% |  |  | 2024-02-19 | 2024-02-22 | 4d |  |  | Project Manager (Dia Khosla ); Client/ Stakeholder Representative [85%] | 59.2h | 59.2h | 1,800 | 1,800 | 1,800 |
| 12 | 1.2.2 | Identify Stakeholder's roles and responsibilites (Internal and external stakeholders involved) |  | 4d | 2024-02-23 A | 2024-02-28 A | 11 | 100% |  |  | 2024-02-23 | 2024-02-28 | 4d |  |  | Project Manager (Dia Khosla ) | 32h | 32h | 1,500 | 1,500 | 1,500 |
| 13 | 1.2.3 | Establish Stakeholder's Communication medium |  | 2d | 2024-02-29 A | 2024-03-01 A | 12 | 100% |  |  | 2024-02-29 | 2024-03-01 | 2d |  | start no earlier than 2024-02-02 | Project Manager (Dia Khosla ) | 16h | 16h | 750 | 750 | 750 |
| 14 | 1.2.4 | Stakeholder Communication established through weekly Team meeting w.r.t to Emailing | milestone | 0d | 2024-03-01 A | 2024-03-01 A | 13 | 100% |  |  | 2024-03-01 | 2024-03-01 | 0d |  |  | Project Manager (Dia Khosla ); Client/ Stakeholder Representative [85%]; Consultant [70%]; Project Coordinator; Content Team( Mary Ellen’ team (Assumed) ) |  |  |  |  |  |
| 15 | 1.2.5 | Consistent Feedback Collected | milestone | 0d | 2024-02-26 A | 2024-02-26 A | 14 | 100% |  |  | 2024-02-26 | 2024-02-26 | 0d |  |  |  |  |  |  |  |  |
| 16 | 2 | **Research and Planning** |  | 50d | 2024-03-04 A | 2024-05-13 |  | 74% | 13.1d |  | 2024-03-04 | 2024-03-15 | 10d | 0d |  |  | 900h | 732h | 29,670 | 11,870 | 18,263.8 |
| 17 | 2.1 | **Market Research Report** |  | 49d | 2024-03-04 A | 2024-05-10 |  | 66% | 16.5d |  | 2024-03-04 | 2024-03-15 | 10d | 0d |  |  | 620h | 452h | 21,420 | 8,900 | 10,513.8 |
| 18 | 2.1.1 | Conduct Industry Trends and Analysis |  | 49d | 2024-03-04 A | 2024-05-10 | 14, 15 | 51% | 24d |  | 2024-03-04 | 2024-03-15 | 10d | 0d |  | Operational Analysts [50%]; Data Analysts [80%] | 228h | 132h | 4,620 | 1,500 | 2,513.8 |
| 19 | 2.1.2 | Document Competitor Insights and Benchmarking report |  | 49d | 2024-03-04 A | 2024-05-10 | 18SS | 82% | 9d |  | 2024-03-04 | 2024-03-05 | 2d | 0d |  | Data Analysts; Contingency Reserve [0.1%] | 392h | 320h | 16,800 | 7,400 | 8,000 |
| 20 | 2.2 | **Target Audience** |  | 22d | 2024-04-12 A | 2024-05-13 A |  | 100% |  |  | 2024-03-04 | 2024-03-06 | 3d |  |  |  | 280h | 280h | 8,250 | 2,970 | 7,750 |
| 21 | 2.2.1 | Identify Audience based on Demographics ( USA, Europe (Engaland, Germany), Canada, Asia, Australia |  | 7d | 2024-05-03 A | 2024-05-13 A | 19SS | 100% |  |  | 2024-03-04 | 2024-03-06 | 3d |  |  | Reseach Department; Contingency Reserve [0.1%]; Consultant | 112h | 112h | 4,700 | 2,300 | 4,200 |
| 22 | 2.2.2 | Conduct User Behavior and Preferences Analysis |  | 21d | 2024-04-12 A | 2024-05-11 A | 21SS | 100% |  |  | 2024-03-04 | 2024-03-06 | 3d |  |  | Reseach Department | 168h | 168h | 3,550 | 670 | 3,550 |
| 23 | 3 | **Landing Page development for 'State of the Art Website'** |  | 71d | 2024-02-01 A | 2024-05-11 |  | 94% | 4.61d |  | 2024-02-01 | 2024-05-16 | 75d | 0d |  |  | 616h | 576h | 31,513 | 28,433 | 20,160 |
| 24 | 3.1 | **Home Feature** |  | 8d | 2024-02-28 A | 2024-03-08 |  | 91% | 0.73d |  | 2024-02-28 | 2024-03-07 | 7d | 0d |  |  | 88h | 80h | 3,821 | 2,701 | 2,800 |
| 25 | 3.1.1 | Create Description Section |  | 1d | 2024-03-07 A | 2024-03-07 A | 22 | 100% |  |  | 2024-03-07 | 2024-03-07 | 1d |  |  | Web Developer (Noah Japhet and his Team) | 8h | 8h | 280 | 280 | 280 |
| 26 | 3.1.2 | Create Permissions Section |  | 4d | 2024-03-05 A | 2024-03-08 A | 25SF | 100% |  |  | 2024-03-05 | 2024-03-07 | 2d |  |  | Web Developer (Noah Japhet and his Team) | 32h | 32h | 1,120 | 560 | 1,120 |
| 27 | 3.1.3 | Create Table of Contents Section |  | 4d | 2024-03-01 A | 2024-03-06 | 26SF | 75% | 1d |  | 2024-03-01 | 2024-03-05 | 2d | 0d |  | Web Developer (Noah Japhet and his Team) | 32h | 24h | 1,120 | 560 | 840 |
| 28 | 3.1.4 | Establish New to This Edition Features Section |  | 2d | 2024-02-28 A | 2024-02-29 | 27SF | 99% | 0d |  | 2024-02-28 | 2024-03-01 | 2d | 0d |  | Web Developer (Noah Japhet and his Team); Contingency Reserve [0.1%] | 16h | 16h | 1,301 | 1,301 | 560 |

Notes:
- 2: Duration Estimation Technique - Expert Judgement / Reason - I have used expert judgement, to calcuate the duration required to gather project requirements, with help of experts, and team and constant collaboration and communication with John Wiley & Sons, It will take a week to define project budget, project schedule and complete project charter, and share it with internal and external stakeholders for collaboration and project initation.
- 12: Without identifying stakeholder's interest and influence, it will become difficult to assign roles and responsibilties to both internal (engineers, web developers, design team, content creators) and external stakeholder - John Wiley & Sons Inc. Team (Manger, Finance team). So, when task 9 will start, only task 10 can be initiated.
- 14: Emails and team meetings will be established to inform decision-making in project completion and consistently ask for feedback.
- 15: Gathering User Feedback: We'll collect user feedback through surveys, feedback forms, and usability testing to pinpoint pain points. Additionally, we'll track metrics like downloads, views, and shares to gauge content effectiveness. Consistent feedback collection will serve as a milestone, ensuring ongoing improvement. / Monitoring and Optimization: Continuously monitoring website performance and user feedback will allow us to identify areas for improvement and optimization. This proactive approach ensures that the website remains responsive and user-friendly. / Design Iterations: From March to July, we'll prioritize design revisions based on feedback from stakeholders. By iteratively refining the design, we aim to enhance the website's user experience and functionality. This collaborative process ensures that the website meets the evolving needs of its users and stakeholders.
- 18: The Duration to complete project shows 49 days, but industry trend analysis can be completed within 25 days, as almost 51% of task has been done. Also, the analysts employed had a buffer and tendency to contribute full time work allocation for 8 hours a day.
- 19: Without conducting industry trends and analysis; it will be difficult to collaborate in documenting competitor insights and begun preparing benchmarking report. So, that's why Start- Start relationship is established between task 16 and 17.
- 23: Duration Estimation Technique - PERT / Reason - Due to possibility of risk involved i.e scope creep/ technical issues/ technology selection, content creation, and integration of complex features. We decided to use PERT to calculate duration of project deliverables, project activties, required to complete task and sub tasks within set timeline and in budget, efficiently utilzing resources and being able to manage uncertainties associated in creating advanced website 'State of the Art' for sponsor John Wiley & Sons. / PERT Estimate: (7 + 4 × 8 + 9) / 6 / = (48) / 6 / = 8 days ~

| ID | WBS | Task | Type | Duration | Start | Finish | Predecessors | Complete | Remaining | Baseline start | Baseline finish | Baseline duration | Total slack | Free slack | Constraint | Deadline | Resources | Work | Actual work | Cost | Baseline cost | Actual cost |
| --- | --- | --- | --- | --- | --- | --- | --- | --- | --- | --- | --- | --- | --- | --- | --- | --- | --- | --- | --- | --- | --- | --- |
| 29 | 3.2 | **About Us Section** |  | 2d | 2024-03-01 A | 2024-03-04 A |  | 100% |  | 2024-03-01 | 2024-03-06 | 4d |  |  |  |  |  | 16h | 16h | 560 | 1,120 | 560 |
| 30 | 3.2.1 | Provide overview about John Wiley & Sons. |  | 2d | 2024-03-01 A | 2024-03-04 A | 28 | 100% |  | 2024-03-01 | 2024-03-04 | 2d |  |  |  |  | Web Developer (Noah Japhet and his Team) | 16h | 16h | 560 | 560 | 560 |
| 31 | 3.2.2 | Details about Authors and Contributors | milestone | 0d | 2024-03-01 A | 2024-03-01 A | 30 | 100% |  | 2024-03-05 | 2024-03-06 | 2d |  |  |  |  | Web Developer (Noah Japhet and his Team) |  |  |  | 560 |  |
| 32 | 3.3 | **Product Section** |  | 19d | 2024-03-07 A | 2024-04-03 |  | 99% | 0d | 2024-03-07 | 2024-04-03 | 19d | 10d |  |  |  |  | 152h | 152h | 12,775 | 12,775 | 5,320 |
| 33 | 3.3.1 | Provide Search Functionality |  | 10d | 2024-03-07 A | 2024-03-21 | 31 | 99% | 0d | 2024-03-07 | 2024-03-21 | 10d | 0d |  |  |  | Web Developer (Noah Japhet and his Team); Contingency Reserve [0.1%] | 80h | 80h | 4,255 | 4,255 | 2,800 |
| 34 | 3.3.2 | Subsections for Textbook Editions |  | 2d | 2024-03-22 A | 2024-03-25 | 33 | 99% | 0d | 2024-03-22 | 2024-03-25 | 2d | 7d | 0d |  |  | Web Developer (Noah Japhet and his Team); Contingency Reserve [0.1%] | 16h | 16h | 3,560 | 3,560 | 560 |
| 35 | 3.3.3 | Provide Multiple Langauge switching options |  | 7d | 2024-03-26 A | 2024-04-03 | 34 | 99% | 0d | 2024-03-26 | 2024-04-03 | 7d | 10d | 0d |  |  | Web Developer (Noah Japhet and his Team); Contingency Reserve [0.1%] | 56h | 56h | 4,960 | 4,960 | 1,960 |
| 36 | 3.4 | **Latest Trends and Publications Feature** |  | 27d | 2024-04-04 A | 2024-05-10 |  | 82% | 4.91d | 2024-04-04 | 2024-05-16 | 31d | 0d |  |  |  |  | 176h | 144h | 7,917 | 7,917 | 5,040 |
| 37 | 3.4.1 | Provide Updates on Trends and Upcoming Publications |  | 10d | 2024-04-04 A | 2024-04-17 | 35 | 99% | 0d | 2024-04-04 | 2024-04-17 | 10d | 11d | 3d |  |  | Web Developer (Noah Japhet and his Team); Contingency Reserve [0.1%] | 80h | 80h | 4,557 | 4,557 | 2,800 |
| 38 | 3.4.2 | Author Insights and Guest Posts |  | 12d | 2024-04-25 A | 2024-05-10 | 37FS+2d | 67% | 4d | 2024-05-01 | 2024-05-16 | 12d | -7d | 0d | start no earlier than 2024-05-01 | 2024-05-01 | Web Developer (Noah Japhet and his Team) | 96h | 64h | 3,360 | 3,360 | 2,240 |
| 39 | 3.5 | **Contact Information and Copyrights Section** |  | 8d | 2024-05-01 A | 2024-05-11 A |  | 100% |  | 2024-05-01 | 2024-05-07 | 5d |  |  |  |  |  | 128h | 128h | 4,480 | 1,960 | 4,480 |
| 40 | 3.5.1 | Provide Contact Information (phone number, email, company's address) |  | 8d | 2024-05-01 A | 2024-05-11 A | 38SS | 100% |  | 2024-05-01 | 2024-05-02 | 2d |  |  |  |  | Web Developer (Noah Japhet and his Team) | 64h | 64h | 2,240 | 560 | 2,240 |
| 41 | 3.5.2 | Inclusion of Copyrights and Patents |  | 8d | 2024-05-01 A | 2024-05-11 A | 40SS | 100% |  | 2024-05-01 | 2024-05-07 | 5d |  |  |  |  | Web Developer (Noah Japhet and his Team) | 64h | 64h | 2,240 | 1,400 | 2,240 |
| 42 | 3.6 | **Additional Features** |  | 63d | 2024-02-01 A | 2024-04-30 A |  | 100% |  | 2024-02-01 | 2024-05-01 | 63d |  |  |  |  |  | 56h | 56h | 1,960 | 1,960 | 1,960 |
| 43 | 3.6.1 | Approved Subscription Plan by John Wiley & Sons. | milestone | 0d | 2024-02-01 A | 2024-02-01 A |  | 100% |  | 2024-02-01 | 2024-02-01 | 0d |  |  |  |  |  |  |  |  |  |  |
| 44 | 3.6.2 | Subscription Plans ( offer discounts and free trail period upto 19 days) |  | 3d | 2024-04-26 A | 2024-04-30 A | 41SF | 100% |  | 2024-04-26 | 2024-05-01 | 3d |  |  |  |  | Web Developer (Noah Japhet and his Team) | 24h | 24h | 840 | 840 | 840 |
| 45 | 3.6.3 | Rental Service for Project Management in Practice TextBook ( 9 months) |  | 2d | 2024-04-24 A | 2024-04-25 A | 44SF | 100% |  | 2024-04-24 | 2024-04-26 | 2d |  |  |  |  | Web Developer (Noah Japhet and his Team) | 16h | 16h | 560 | 560 | 560 |
| 46 | 3.6.4 | Coupon Codes/Discount Offers on purchase of 'Project Management in Practice' |  | 2d | 2024-04-22 A | 2024-04-23 A | 45SF | 100% |  | 2024-04-22 | 2024-04-24 | 2d |  |  |  |  | Web Developer (Noah Japhet and his Team) | 16h | 16h | 560 | 560 | 560 |
| 47 | 4 | **Design Phase:** |  | 12d | 2024-03-06 A | 2024-03-22 |  |  | 12d | 2024-04-16 | 2024-05-01 | 12d | 0d |  |  |  |  | 148h |  | 4,632 | 5,352 |  |
| 48 | 4.1 | Create Visual Design Concepts and Mockups | milestone | 0d | 2024-03-11 A | 2024-03-11 A | 46SF | 100% |  | 2024-04-17 | 2024-04-22 | 3d |  |  |  |  | Design Team |  |  |  | 720 |  |
| 49 | 4.2 | Create Initial design concepts and explorations |  | 2d | 2024-03-12 | 2024-03-13 | 48 |  |  | 2024-04-22 | 2024-04-23 | 2d | 0d |  |  |  | Design Team | 16h |  | 480 | 480 |  |
| 50 | 4.3 | Implement Mockup prototypes for key pages |  | 3d | 2024-03-12 | 2024-03-14 | 49SS |  |  | 2024-04-22 | 2024-04-24 | 3d | 0d |  |  |  | Design Team | 24h |  | 720 | 720 |  |
| 51 | 4.4 | **Visual design themes and styles** |  | 12d | 2024-03-06 | 2024-03-22 |  |  |  | 2024-04-16 | 2024-05-01 | 12d | 0d |  |  |  |  | 108h |  | 3,432 | 3,432 |  |
| 52 | 4.4.1 | **Graphic Design** |  | 12d | 2024-03-06 | 2024-03-22 |  |  |  | 2024-04-16 | 2024-05-01 | 12d | 0d |  |  |  |  | 108h |  | 3,432 | 3,432 |  |
| 53 | 4.4.1.1 | Creates visuals for website 'State of the Art' |  | 2d | 2024-03-08 | 2024-03-12 | 50SF |  |  | 2024-04-18 | 2024-04-22 | 2d | 0d |  |  |  | Design Team | 16h |  | 480 | 480 |  |
| 54 | 4.4.1.2 | Designs promotional materials, banners, and advertisements |  | 2d | 2024-03-06 | 2024-03-08 | 53SF |  |  | 2024-04-16 | 2024-04-18 | 2d | 0d |  |  |  | Design Team | 16h |  | 480 | 480 |  |
| 55 | 4.4.1.3 | Ensure visual consistency and brand identity |  | 1d | 2024-03-08 | 2024-03-08 | 54 |  |  | 2024-04-18 | 2024-04-18 | 1d | 0d |  |  |  | UX Designer (John Smith) | 8h |  | 280 | 280 |  |
| 56 | 4.4.1.4 | Collaborate with UI/UX designers to integrate graphics |  | 7d | 2024-03-11 | 2024-03-20 | 55 |  |  | 2024-04-19 | 2024-04-29 | 7d | 0d |  |  |  | Design Team [40%] | 22.4h |  | 672 | 672 |  |
| 57 | 4.4.1.5 | Adapt designs for different screen sizes and resolutions |  | 2d | 2024-03-21 | 2024-03-22 | 56 |  |  | 2024-04-30 | 2024-05-01 | 2d | 0d |  |  |  | Design Team [95%]; UX Designer (John Smith) [90%]; UI/UX Designer and Testing Team (John Smith (Assumed) ) | 45.6h |  | 1,520 | 1,520 |  |

Notes:
- 31: We finished the task 2 days earlier.
- 47: Duration estimate - Expert judgment, and historical data / Reason - Design phase will take 12 days, as we have approached the design team and they have agreed to complete within 12 days, also they have expertise in this field, so it will be easily done by the design team and also , we have past record of designing other website for projects, and design team has capability of completing and finishing design of the website ' State of the Art' within 1 week ~.
- 54: Task 52 cannot finish until Task 51 has started, as to finish task 52, requirements related to visuals for website should be met.

| ID | WBS | Task | Type | Duration | Start | Finish | Predecessors | Complete | Remaining | Baseline start | Baseline finish | Baseline duration | Total slack | Constraint | Deadline | Resources | Work | Actual work | Cost | Baseline cost | Actual cost |
| --- | --- | --- | --- | --- | --- | --- | --- | --- | --- | --- | --- | --- | --- | --- | --- | --- | --- | --- | --- | --- | --- |
| 58 | 5 | **Software and technology required to create Website** |  | 83d | 2024-04-01 | 2024-07-24 |  |  |  | 2024-04-01 | 2024-07-24 | 83d | 0d |  |  | Web Developer (Noah Japhet and his Team) | 2312h |  | 71,700 | 71,700 |  |
| 59 | 5.1 | Choose CMS Platform |  | 2d | 2024-04-01 | 2024-04-02 |  |  |  | 2024-04-01 | 2024-04-02 | 2d | 0d | start no earlier than 2024-04-01 |  | Web Developer (Noah Japhet and his Team); Investment made in IT Software [0.1%] | 16h |  | 1,060 | 1,060 |  |
| 60 | 5.2 | Evaluate Scalability and Security |  | 30d | 2024-04-03 | 2024-05-14 | 59 |  |  | 2024-04-03 | 2024-05-14 | 30d | 0d |  |  | Web Developer (Noah Japhet and his Team) | 240h |  | 8,400 | 8,400 |  |
| 61 | 5.3 | **Frontend Development** |  | 40d | 2024-04-17 | 2024-06-11 |  |  |  | 2024-04-17 | 2024-06-11 | 40d | 0d |  |  | Front End Team | 640h |  | 20,200 | 20,200 |  |
| 62 | 5.3.1 | Code HTML and CSS Structure |  | 10d | 2024-04-17 | 2024-04-30 |  |  |  | 2024-04-17 | 2024-04-30 | 10d | 0d | start no earlier than 2024-04-17 |  | Front End Team; Investment made in IT Software [0.1%] | 80h |  | 3,400 | 3,400 |  |
| 63 | 5.3.2 | Integrate JavaScript Functionality |  | 30d | 2024-05-01 | 2024-06-11 | 62 |  |  | 2024-05-01 | 2024-06-11 | 30d | 0d | start no earlier than 2024-04-02 |  | Front End Team | 240h |  | 7,200 | 7,200 |  |
| 64 | 5.4 | **Backend Development** |  | 31d | 2024-06-12 | 2024-07-24 | 61 |  |  | 2024-06-12 | 2024-07-24 | 31d | 0d | start no earlier than 2024-03-04 |  | Back End Team | 752h |  | 18,800 | 18,800 |  |
| 65 | 5.4.1 | Implement Database Management System |  | 10d | 2024-06-12 | 2024-06-25 | 57SS |  |  | 2024-06-12 | 2024-06-25 | 10d | 0d |  |  | Back End Team | 80h |  | 2,000 | 2,000 |  |
| 66 | 5.4.2 | Research Necessary APIs |  | 10d | 2024-06-12 | 2024-06-25 | 65SS |  |  | 2024-06-12 | 2024-06-25 | 10d | 0d |  |  | Back End Team | 80h |  | 2,000 | 2,000 |  |
| 67 | 5.4.3 | Integrate Payment gateways |  | 15d | 2024-06-12 | 2024-07-02 | 66SS |  |  | 2024-06-12 | 2024-07-02 | 15d | 0d |  |  | Back End Team | 120h |  | 3,000 | 3,000 |  |
| 68 | 5.4.4 | Set up Server Environment |  | 12d | 2024-07-03 | 2024-07-18 | 67 |  |  | 2024-07-03 | 2024-07-18 | 12d | 0d |  |  | Back End Team | 96h |  | 2,400 | 2,400 |  |
| 69 | 5.4.5 | Incoperate SEO (Search Enginge Optimization) Strategies |  | 16d | 2024-07-03 | 2024-07-24 | 68SS |  |  | 2024-07-03 | 2024-07-24 | 16d | 0d |  |  | Back End Team | 128h |  | 3,200 | 3,200 |  |
| 70 | 6 | **SEO optimization** |  | 103d | 2024-02-01 A | 2024-06-25 A |  | 100% |  | 2024-02-01 | 2024-07-03 | 109d |  |  |  |  | 752.8h | 752.8h | 30,236 | 30,236 | 29,736 |
| 71 | 6.1 | Incorporate search engine optimization (SEO) |  | 12d | 2024-03-25 A | 2024-04-09 A | 57 | 100% |  | 2024-05-02 | 2024-05-17 | 12d |  |  |  | SEO Team | 96h | 96h | 3,840 | 3,840 | 3,840 |
| 72 | 6.2 | Optimize search engine results pages (SERPs) |  | 13d | 2024-04-10 A | 2024-04-26 A | 71 | 100% |  | 2024-05-20 | 2024-06-05 | 13d |  |  |  | SEO Team | 104h | 104h | 4,160 | 4,160 | 4,160 |
| 73 | 6.3 | Perform user acceptance testing (UAT) |  | 12d | 2024-04-11 A | 2024-04-26 A | 72FF | 100% |  | 2024-05-21 | 2024-06-05 | 12d |  |  |  | SEO Team; Contingency Reserve [0.1%] | 96h | 96h | 4,340 | 4,340 | 3,840 |
| 74 | 6.4 | Ensure Browser Compatibility (with Chrome, Firefox, Safari, Edge) |  | 12d | 2024-04-11 A | 2024-04-26 A | 73FF | 100% |  | 2024-05-21 | 2024-06-05 | 12d |  |  |  | SEO Team [50%]; Graphic Design Team [20%] | 57.6h | 57.6h | 2,160 | 2,160 | 2,160 |
| 75 | 6.5 | Responsive Design |  | 20d | 2024-04-29 A | 2024-05-24 A | 74 | 100% |  | 2024-06-06 | 2024-07-03 | 20d |  |  |  | SEO Team [60%]; Content Strategist (Mary Ellen) [40%] | 160h | 160h | 4,800 | 4,800 | 4,800 |
| 76 | 6.6 | Mobilefriendly layout optimization |  | 7.5d | 2024-04-17 A | 2024-04-29 A | 75SF | 100% |  | 2024-05-27 | 2024-06-06 | 7.5d |  |  |  | SEO Team [60%] | 36h | 36h | 1,440 | 1,440 | 1,440 |
| 77 | 6.7 | Cross device compatibility testing |  | 3.33d | 2024-04-29 A | 2024-05-02 A | 76 | 100% |  | 2024-06-06 | 2024-06-11 | 3.33d |  |  |  | SEO Team [60%] | 16h | 16h | 640 | 640 | 640 |
| 78 | 6.8 | **Finalize 'State of the Art' Website Design** |  | 103d | 2024-02-01 A | 2024-06-25 A |  | 100% |  | 2024-02-01 | 2024-06-25 | 103d |  |  |  |  | 187.2h | 187.2h | 8,856 | 8,856 | 8,856 |
| 79 | 6.8.1 | John Wiley & Sons. Has provided details related to design and website logo and visuals | milestone | 0d | 2024-02-01 A | 2024-02-01 A |  | 100% |  | 2024-02-01 | 2024-02-01 | 0d |  |  |  |  |  |  |  |  |  |
| 80 | 6.8.2 | Evaluate and Implement Visual aesthetics and branding guidelines |  | 12d | 2024-06-10 A | 2024-06-25 A | 77SS | 100% |  | 2024-06-10 | 2024-06-25 | 12d |  | must finish on 2024-06-25 | 2024-06-25 | SEO Team; System Administrator/DevOps Engineer (Noah Japhet and his team ) [95%] | 187.2h | 187.2h | 8,856 | 8,856 | 8,856 |
| 81 | 7 | **Content Creation and Curation** |  | 21d | 2024-05-17 A | 2024-06-14 |  | 10% | 18.9d | 2024-05-17 | 2024-06-14 | 21d | 0d |  |  |  | 289.6h | 80h | 9,024 | 9,024 | 2,400 |
| 82 | 7.1 | Develop content strategy for 'Project Management in Practice' |  | 16d | 2024-05-17 | 2024-06-10 | 80SF |  |  | 2024-05-17 | 2024-06-10 | 16d | 0d |  |  | Content Team( Mary Ellen’ team (Assumed) ) | 128h |  | 3,840 | 3,840 |  |
| 83 | 7.2 | Content for 'Project Management In Practice' is provided | milestone | 0d | 2024-06-10 | 2024-06-10 | 82 |  |  | 2024-06-10 | 2024-06-10 | 0d | 0d |  |  |  |  |  |  |  |  |
| 84 | 7.3 | Content alignment with brand messaging |  | 4d | 2024-05-20 A | 2024-05-23 A | 82SS | 100% |  | 2024-05-20 | 2024-05-31 | 10d |  | must finish on 2024-05-31 | 2024-05-31 | Content Team( Mary Ellen’ team (Assumed) ) | 80h | 80h | 2,400 | 2,400 | 2,400 |
| 85 | 7.4 | Content Optimization for SEO |  | 20d | 2024-05-20 | 2024-06-14 | 84SS |  |  | 2024-05-20 | 2024-06-14 | 20d | 0d |  |  | Content Team( Mary Ellen’ team (Assumed) ) [30%]; SEO Team [70%] | 81.6h |  | 2,784 | 2,784 |  |

Notes:
- 58: Duration Estimate Technique - PERT Estimate: (80 + 4 × 100 + 120) / 6 / = (600) / 6 / = 100 days ~ / Choosing right software and technology which will require front-end and back-end development for creating advanced website ' State of the Art' will require to understand various tasks such as designing user interfaces, implementing responsive layouts, and optimizingwebsite performance. Front-end development tasks are often interdependent with back-end systems and databases. Delays in back-end development or API integration can impact front-end tasks. These tasks can vary in complexity, therefore we have used PERT s to consider optimistic, pessimistic, and most likely estimates for to complete each task on allocated timeframe, to avoid any delays in project completion.
- 64: Backend constraint on requirement gathering and design.
- 70: We finised SEO optimization 6 days earlier, due to extra buffer and resources allocated and team dedication and full time team contribution.
- 73: Task 70 should be finished , otherwise task 71 will not be completed because task 71 is entirley dependent on task 70, as technical expert has provided details on how UAT will only be conducted when search engine results are not entirely optimized.
- 74: Task 72 requires task 71 to be finished because to ensure compatibility with enginers, UAT need to be performed.
- 81: Duration Estimate - Learning curve is used to estimate the completion of Content Creation and curation for 'Project Management in Practice'. Also, the data for content has already been provided by John Wiley & Sons. (assumed).

| ID | WBS | Task | Type | Duration | Start | Finish | Predecessors | Complete | Remaining | Baseline start | Baseline finish | Baseline duration | Total slack | Free slack | Constraint | Deadline | Resources | Work | Actual work | Cost | Baseline cost | Actual cost |
| --- | --- | --- | --- | --- | --- | --- | --- | --- | --- | --- | --- | --- | --- | --- | --- | --- | --- | --- | --- | --- | --- | --- |
| 86 | 8 | **Testing and Quality Assurance Phase:** |  | 21d | 2024-05-28 A | 2024-06-25 |  | 48% | 10.89d | 2024-05-28 | 2024-06-28 | 24d | -0.47d | 0d |  |  |  | 216h | 104h | 13,240 | 14,680 | 4,200 |
| 87 | 8.1 | **Comprehensive Testing Reports** |  | 12d | 2024-06-04 A | 2024-06-20 |  | 56% | 5.33d | 2024-06-05 | 2024-06-20 | 12d | 0d |  |  |  |  | 72h | 40h | 7,240 | 7,600 | 1,800 |
| 88 | 8.1.1 | Functional testing results |  | 4d | 2024-06-17 | 2024-06-20 | 85 |  |  | 2024-06-17 | 2024-06-20 | 4d | 0d |  | finish no earlier than 2024-06-17 |  | Testing Team | 32h |  | 1,440 | 1,440 |  |
| 89 | 8.1.2 | Usability testing findings |  | 5d | 2024-06-10 A | 2024-06-15 A | 88SF | 100% |  | 2024-06-10 | 2024-06-17 | 5d |  |  |  |  | Testing Team; Contingency Reserve [0.1%] | 40h | 40h | 5,800 | 5,800 | 1,800 |
| 90 | 8.1.3 | Testing documentation | milestone | 0d | 2024-06-04 A | 2024-06-04 A | 89SF-2d | 100% |  | 2024-06-05 | 2024-06-06 | 1d |  |  |  |  | Testing Team |  |  |  | 360 |  |
| 91 | 8.2 | **Robust testing processes (User Acceptance Testing Phase)** |  | 21d | 2024-05-28 A | 2024-06-25 |  | 44% | 11.67d | 2024-05-28 | 2024-06-28 | 24d | -0.47d | 0d |  |  |  | 144h | 64h | 6,000 | 7,080 | 2,400 |
| 92 | 8.2.1 | User feedback and acceptance testing outcomes |  | 6d | 2024-05-28 A | 2024-06-04 A | 90SF | 100% |  | 2024-05-28 | 2024-06-05 | 6d |  |  |  |  | UI/UX Designer and Testing Team (John Smith (Assumed) ) | 48h | 48h | 1,680 | 1,680 | 1,680 |
| 93 | 8.2.2 | Bug reports and issue resolution |  | 2d | 2024-06-05 A | 2024-06-06 A | 92 | 100% |  | 2024-06-05 | 2024-06-11 | 5d |  |  |  |  | Testing Team | 16h | 16h | 720 | 1,800 | 720 |
| 94 | 8.2.3 | Testing validation and signoff |  | 10d | 2024-06-12 | 2024-06-25 | 93FS+3d |  |  | 2024-06-17 | 2024-06-28 | 10d | -0.47d | 0d |  |  | Testing Team | 80h |  | 3,600 | 3,600 |  |
| 95 | 9 | **Deployment:** |  | 9.47d? | 2024-06-26 | 2024-07-09 |  |  |  | 2024-07-01 | 2024-07-12 | 9.47d? | -0.47d | 0d |  |  |  | 504.4h |  | 25,968 | 25,968 |  |
| 96 | 9.1 | **Website Launch** |  | 9.47d? | 2024-06-26 | 2024-07-09 |  |  |  | 2024-07-01 | 2024-07-12 | 9.47d? | -0.47d | 0d |  |  |  | 504.4h |  | 25,968 | 25,968 |  |
| 97 | 9.1.1 | Register Domain, Set Up Hosting, Configure DNS, etc. |  | 2.11d | 2024-06-26 | 2024-06-28 | 94 |  |  | 2024-07-01 | 2024-07-03 | 2.11d | -0.47d | 0d |  | 2024-06-27 | System Administrator/DevOps Engineer (Noah Japhet and his team ) [95%]; Client/ Stakeholder Representative [85%]; Project Coordinator; Project Manager (Dia Khosla ); Web Developer (Noah Japhet and his Team); Contingency Reserve [0.1%] | 77.6h |  | 6,072 | 6,072 |  |
| 98 | 9.1.2 | Began launch for website |  | 1d? | 2024-06-28 | 2024-07-01 | 97 |  |  | 2024-07-03 | 2024-07-04 | 1d? | 0d |  |  |  |  |  |  |  |  |  |
| 99 | 9.1.3 | **Launch Plan and Communication Strategy** |  | 7.37d | 2024-06-28 | 2024-07-09 |  |  |  | 2024-07-03 | 2024-07-12 | 7.37d | -0.47d | 0d |  |  |  | 426.8h |  | 19,896 | 19,896 |  |
| 100 | 9.1.3.1 | User and Client Feedback on functionality |  | 4.21d | 2024-06-28 | 2024-07-04 | 97 |  |  | 2024-07-03 | 2024-07-09 | 4.21d | -0.47d | 0d |  |  | System Administrator/DevOps Engineer (Noah Japhet and his team ) [95%]; Client/ Stakeholder Representative [85%]; Project Coordinator; Project Manager (Dia Khosla ); Web Developer (Noah Japhet and his Team) | 155.2h |  | 6,144 | 6,144 |  |
| 101 | 9.1.3.2 | Deploy Website to Production Server |  | 5.26d | 2024-06-28 | 2024-07-05 | 100SS |  |  | 2024-07-03 | 2024-07-10 | 5.26d | -0.47d | 0d |  |  | System Administrator/DevOps Engineer (Noah Japhet and his team ) [95%]; Client/ Stakeholder Representative [85%]; Project Coordinator; Project Manager (Dia Khosla ); Web Developer (Noah Japhet and his Team); Contingency Reserve [0.1%] | 194h |  | 9,680 | 9,680 |  |
| 102 | 9.1.3.3 | Launch Website |  | 2.11d | 2024-07-05 | 2024-07-09 | 101 |  |  | 2024-07-10 | 2024-07-12 | 2.11d | -0.47d | 0d | start no earlier than 2024-07-05 | 2024-07-08 | System Administrator/DevOps Engineer (Noah Japhet and his team ) [95%]; Client/ Stakeholder Representative [85%]; Project Coordinator; Project Manager (Dia Khosla ); Web Developer (Noah Japhet and his Team); Contingency Reserve [0.1%] | 77.6h |  | 4,072 | 4,072 |  |
| 103 | 10 | **Project Closing** |  | 128d? | 2024-02-01 A | 2024-07-30 |  | 16% | 106.95d? | 2024-07-11 | 2024-08-02 | 16d | 0d |  |  |  |  | 781.06h | 181.06h | 31,242.33 | 30,400 | 7,242.33 |
| 104 | 10.1 | **Website Maintenance and Support** |  | 128d? | 2024-02-01 A | 2024-07-30 |  | 16% | 106.95d? | 2024-07-11 | 2024-08-02 | 16d | 0d |  |  |  |  | 781.06h | 181.06h | 31,242.33 | 30,400 | 7,242.33 |
| 106 | 10.1.1 | Address Bug Fixes, Updates, and Enhancements |  | 5d | 2024-07-08 | 2024-07-15 | 102FS-1d |  |  | 2024-07-11 | 2024-07-18 | 5d | 0d |  |  |  | Testing Team; Project Coordinator; Project Manager (Dia Khosla ); UI/UX Designer and Testing Team (John Smith (Assumed) ); Web Developer (Noah Japhet and his Team) | 200h |  | 8,000 | 8,000 |  |
| 107 | 10.1.2 | **Post launch Monitoring** |  | 15.53d | 2024-07-09 A | 2024-07-30 |  | 21% | 12.26d | 2024-07-12 | 2024-08-02 | 15d | 0d |  |  |  |  | 581.06h | 181.06h | 23,242.33 | 22,400 | 7,242.33 |
| 108 | 10.1.2.1 | Monitor Website Performance and Security |  | 5d | 2024-07-17 | 2024-07-24 | 106FS+2d |  |  | 2024-07-22 | 2024-07-29 | 5d | 0d |  |  |  | Testing Team; Project Coordinator; Project Manager (Dia Khosla ); UI/UX Designer and Testing Team (John Smith (Assumed) ); Web Developer (Noah Japhet and his Team) | 200h |  | 8,000 | 8,000 |  |
| 109 | 10.1.2.2 | Implement Regular Backups and Updates |  | 5d | 2024-07-17 | 2024-07-24 | 108FF |  |  | 2024-07-22 | 2024-07-29 | 5d | 0d |  |  |  | Testing Team; Project Coordinator; Project Manager (Dia Khosla ); UI/UX Designer and Testing Team (John Smith (Assumed) ); Web Developer (Noah Japhet and his Team) | 200h |  | 8,000 | 8,000 |  |
| 110 | 10.1.2.3 | Ensure Compliance with relevant regulations ( with GDPR, ADA, CCPA guidelines) |  | 4.53d | 2024-07-24 A | 2024-07-30 A | 109 | 100% |  | 2024-07-29 | 2024-08-02 | 4d |  |  |  |  | Testing Team; Project Coordinator; Project Manager (Dia Khosla ); UI/UX Designer and Testing Team (John Smith (Assumed) ); Web Developer (Noah Japhet and his Team) | 181.06h | 181.06h | 7,242.33 | 6,400 | 7,242.33 |
| 111 | 10.1.2.4 | Provide training to John Wiley & Sons. Inc After Post launch and handover the webiste functionality document |  | 7d | 2024-07-09 | 2024-07-18 | 102 |  |  | 2024-07-12 | 2024-07-23 | 7d | 0d |  |  |  |  |  |  |  |  |  |
| 112 | 10.1.2.5 | Project Closed | milestone | 0d | 2024-07-30 | 2024-07-30 | 110 |  |  | 2024-08-02 | 2024-08-02 | 0d | 0d |  |  |  |  |  |  |  |  |  |

Notes:
- 88: For Functional testing to happen, back-end infrastructure for website must be ready; hence back-end infrastructure is constraint for testing.
- 90: Testing can be finished 1 day earlier.
- 109: Both task 105 and 106 must finish at the same time as Task 105 and Task 106 have an FF relationship, Task 106 cannot finish until bugs has been fixed already and updates and website enhancements have been implemented successfully before due date.
- 112: Project manager with stakeholders involved will close the project, making sure payment is received by contacting the Finance Tem.
